# ProvoDashboard

Schedule from MS Project, 2014-09-09 to 2015-04-24, A marks actual dates.
Toshiba

## Calendars

- Standard: Mon-Fri 08:00-12:00, 13:00-17:00; Sat-Sun off.

## Resources

| Resource | Group |
| --- | --- |
| Todd | Provo Dashboard |
| Ikani | Provo Dashboard |
| Sam | Provo Dashboard |
| Colton | Provo Dashboard |
| Blake |  |
| Sam / Colton |  |

## Schedule

| ID | WBS | Task | Type | Duration | Start | Finish | Predecessors | Complete | Constraint | Resources | Work | Actual work |
| --- | --- | --- | --- | --- | --- | --- | --- | --- | --- | --- | --- | --- |
| 1 | 1 | Access to Server | manual | 1d | 2014-10-06 A | 2014-10-06 A |  | 100% |  | Todd | 8h | 8h |
| 2 | 2 | Database Design | manual | 4d | 2014-10-09 A | 2014-10-14 A | 1 | 100% |  | Colton | 32h | 32h |
| 3 | 3 | Input Form questions | manual | 3d | 2014-09-09 A | 2014-09-11 A |  | 100% |  | Blake | 24h | 24h |
| 4 | 4 | Development Envrioments created | manual | 7d | 2014-09-30 A | 2014-10-08 A |  | 100% |  | Todd | 56h | 56h |
| 5 | 5 | Version Control created and accessile | manual | 2d | 2014-09-30 A | 2014-10-01 A |  | 100% |  | Todd | 16h | 16h |
| 6 | 6 | U.I design of layouts created | manual | 14d | 2014-10-09 A | 2014-10-28 A | 4 | 100% |  | Ikani | 112h | 112h |
| 7 | 7 | U.I design intergration | manual | 14d | 2014-10-09 A | 2014-10-28 A | 4 | 100% |  | Ikani | 112h | 112h |
| 8 | 8 | Homepage | manual | 7d | 2014-10-24 A | 2014-11-03 A |  | 100% |  | Todd | 56h | 56h |
| 9 | 9 | Category page template | manual | 7d | 2014-10-29 A | 2014-11-06 A | 6 | 100% |  | Ikani | 56h | 56h |
| 10 | 10 | Graph Integration | manual | 7d | 2014-10-29 A | 2014-11-06 A | 6 | 100% |  | Todd | 56h | 56h |
| 11 | 11 | Graphs display data from database correctly | manual | 7d | 2014-10-15 A | 2014-10-23 A | 2 | 100% |  | Colton; Todd | 112h | 112h |
| 12 | 12 | Input forms for continual data gathering | manual | 14d | 2014-10-15 A | 2014-11-03 A | 2 | 100% |  | Colton | 112h | 112h |
| 13 | 13 | Input forms correctly save data to database | manual | 7d | 2014-11-04 A | 2014-11-12 A | 12 | 100% |  | Colton | 56h | 56h |
| 14 | 14 | New database data is viewable to website | manual | 14d | 2014-11-13 A | 2014-12-02 A | 13 | 100% |  | Todd | 112h | 112h |
| 15 | 15 | Modals for individual category graph displays | manual | 14d | 2014-12-02 A | 2014-12-19 A |  | 100% |  | Todd | 112h | 112h |
| 16 | 16 | Update Project Plan | manual | 5d | 2015-01-06 A | 2015-01-12 A |  | 100% |  | Colton | 40h | 40h |
| 17 | 17 | **Update Dashboard Layout** |  | 11d | 2015-01-06 A | 2015-01-20 A |  | 100% |  | Todd | 408h | 408h |
| 18 | 17.1 | add header | manual | 10d | 2015-01-06 A | 2015-01-19 A |  | 100% | start no earlier than 2015-01-06 | Todd | 80h | 80h |
| 19 | 17.2 | center divs | manual | 10d | 2015-01-06 A | 2015-01-19 A |  | 100% | start no earlier than 2015-01-06 | Todd | 80h | 80h |
| 20 | 17.3 | add text blocks | manual | 10d | 2015-01-06 A | 2015-01-19 A |  | 100% | start no earlier than 2015-01-06 | Todd | 80h | 80h |
| 21 | 17.4 | change column sizes | manual | 10d | 2015-01-06 A | 2015-01-19 A |  | 100% | start no earlier than 2015-01-06 | Todd | 80h | 80h |
| 22 | 18 | **Change Main Categories** |  | 11d | 2015-01-06 A | 2015-01-20 A |  | 100% |  | Ikani | 168h | 168h |
| 23 | 18.1 | add icons | manual | 10d | 2015-01-06 A | 2015-01-19 A |  | 100% |  | Ikani | 80h | 80h |
| 24 | 19 | **Data base sub-categories** |  | 11d | 2015-01-20 A | 2015-02-03 A |  | 100% |  | Colton | 240h | 240h |
| 25 | 19.1 | Dynamic addition of sub-categories | manual | 5d | 2015-01-27 A | 2015-02-02 A |  | 100% |  | Colton; Ikani | 40h | 40h |
| 26 | 19.2 | sub-category data input | manual | 7d | 2015-01-20 A | 2015-01-28 A |  | 100% |  | Colton; Ikani | 112h | 112h |

| ID | WBS | Task | Type | Duration | Start | Finish | Predecessors | Complete | Remaining | Actual start | Resources | Work | Actual work |
| --- | --- | --- | --- | --- | --- | --- | --- | --- | --- | --- | --- | --- | --- |
| 27 | 20 | **Migrate Libraries** |  | 1d | 2015-02-10 A | 2015-02-10 A |  | 100% |  |  | Todd | 16h | 16h |
| 28 | 20.1 | BootStrap / Angular / Jquery charts | manual | 1d | 2015-02-10 A | 2015-02-10 A |  | 100% |  |  | Todd | 8h | 8h |
| 29 | 21 | **Data input page** |  | 14d | 2015-02-03 A | 2015-02-20 A |  | 100% |  |  | Sam | 176h | 176h |
| 30 | 21.1 | Create Data input page | manual | 4d | 2015-02-09 A | 2015-02-12 A |  | 100% |  |  | Sam | 32h | 32h |
| 31 | 21.2 | Save to DB | manual | 2d | 2015-02-13 A | 2015-02-16 A |  | 100% |  |  | Sam | 16h | 16h |
| 32 | 21.3 | Add batch import | manual | 2d | 2015-02-10 A | 2015-02-11 A |  | 100% |  |  | Sam | 16h | 16h |
| 33 | 22 | **sub-category page layouts and template** |  | 7d | 2015-02-10 A | 2015-02-18 A |  | 100% |  |  | Ikani | 104h | 104h |
| 34 | 22.1 | Create sub-category pages | manual | 3d | 2015-02-12 A | 2015-02-16 A |  | 100% |  |  | Ikani | 24h | 24h |
| 35 | 22.2 | Attach graphs to sub-categories | manual | 3d | 2015-02-16 A | 2015-02-18 A |  | 100% |  |  | Ikani | 24h | 24h |
| 36 | 23 | **Add Permissions** |  | 14d | 2015-02-10 | 2015-02-27 A |  | 100% |  | 2015-02-03 | Todd | 208h | 208h |
| 37 | 23.1 | Create Administration Page | manual | 6d | 2015-02-03 A | 2015-02-10 A |  | 100% |  |  | Todd | 48h | 48h |
| 38 | 23.2 | Define and set Admin permissions | manual | 3d | 2015-02-10 A | 2015-02-12 A |  | 100% |  |  | Todd | 24h | 24h |
| 39 | 23.3 | Define and Set User Permission | manual | 3d | 2015-02-10 A | 2015-02-12 A |  | 100% |  |  | Todd | 24h | 24h |
| 40 | 24 | WATER LINE | manual | 40d | 2015-01-06 A | 2015-03-01 |  |  | 40d |  |  |  |  |
| 41 | 25 | **Create Concrete Category and Graphs** |  | 20d | 2015-02-26 A | 2015-03-25 A |  | 100% |  |  | Ikani; Colton; Sam; Todd | 840h | 840h |
| 42 | 25.1 | create concrete sub-categories in database | manual | 5d | 2015-02-26 A | 2015-03-04 A |  | 100% |  |  | Colton | 40h | 40h |
| 43 | 25.2 | data input for new category | manual | 5d | 2015-03-04 A | 2015-03-10 A |  | 100% |  |  | Sam | 40h | 40h |
| 44 | 25.3 | sub-category descriptions | manual | 5d | 2015-03-04 A | 2015-03-10 A |  | 100% |  |  | Colton | 40h | 40h |
| 45 | 25.4 | render new category graphs and pages | manual | 5d | 2015-03-10 A | 2015-03-16 A |  | 100% |  |  | Todd | 40h | 40h |
| 46 | 25.5 | Clean up HTML and CSS issues | manual | 5d | 2015-03-16 A | 2015-03-20 A |  | 100% |  |  | Ikani | 40h | 40h |
| 47 | 26 | Modals to have custom date range | manual | 2d | 2015-04-01 | 2015-04-02 |  |  |  |  | Todd; Ikani; Colton; Sam | 64h |  |
| 48 | 27 | Visible / Invisible Java Code | manual | 2d | 2015-04-01 | 2015-04-02 |  |  |  |  | Ikani; Colton; Sam; Todd | 64h |  |
| 49 | 28 | Visible / Invisible Button | manual | 2d | 2015-04-01 | 2015-04-02 |  |  |  |  | Ikani; Colton; Sam; Todd | 64h |  |
| 50 | 29 | **Unit Testing** |  | 12d | 2015-03-17 A | 2015-04-01 | 25, 26, 27, 28 | 47% | 6.35d |  | Colton; Todd; Sam; Ikani | 568h | 112h |
| 51 | 29.1 | Write Test Plan | manual | 3d | 2015-03-17 A | 2015-03-19 A |  | 100% |  |  | Todd; Sam; Ikani | 72h | 72h |
| 52 | 29.2 | Data Validation | manual | 2d | 2015-03-21 A | 2015-03-23 |  | 75% | 0.5d |  | Todd | 16h | 12h |
| 53 | 29.3 | SQL Injection checks | manual | 2d | 2015-03-21 | 2015-03-23 |  |  |  |  | Colton | 16h |  |
| 54 | 29.4 | Test batch import | manual | 4d | 2015-03-24 A | 2015-03-27 | 21 | 38% | 2.5d |  | Sam | 32h | 12h |
| 55 | 29.5 | Test custom date ranges | manual | 2d | 2015-03-21 | 2015-03-23 |  |  |  |  | Sam | 16h |  |
| 56 | 29.6 | Exception Handleing | manual | 4d | 2015-03-28 A | 2015-04-01 |  | 50% | 2d |  | Colton | 32h | 16h |

| ID | WBS | Task | Type | Duration | Start | Finish | Complete | Remaining | Resources | Work | Actual work |
| --- | --- | --- | --- | --- | --- | --- | --- | --- | --- | --- | --- |
| 57 | 30 | **User Testing** |  | 10d | 2015-04-07 | 2015-04-20 |  |  | Colton; Todd; Sam; Ikani | 480h |  |
| 58 | 30.1 | Focus Group Testing | manual | 10d | 2015-04-07 | 2015-04-20 |  |  | Colton | 80h |  |
| 59 | 30.2 | City Member Feedback / Security Check | manual | 10d | 2015-04-07 | 2015-04-20 |  |  | Colton | 80h |  |
| 60 | 31 | **Improvements based on feedback** |  | 7d | 2015-04-16 | 2015-04-24 |  |  | Ikani | 168h |  |
| 61 | 31.1 | admin styling | manual | 7d | 2015-04-16 | 2015-04-24 |  |  | Sam | 56h |  |
| 62 | 31.2 | Improve input interface | manual | 7d | 2015-04-16 | 2015-04-24 |  |  | Todd | 56h |  |
| 63 | 32 | **Write Documentation** |  | 14d | 2015-03-23 A | 2015-04-09 | 25% | 10.5d | Sam; Colton; Todd | 672h | 56h |
| 64 | 32.1 | Server / Software documentation | manual | 14d | 2015-03-23 A | 2015-04-09 | 50% | 7d | Todd | 112h | 56h |
| 65 | 32.2 | User Documentation | manual | 14d | 2015-03-23 | 2015-04-09 |  |  | Sam; Colton | 224h |  |
| 66 | 33 | Training Provo City | manual | 1d? | 2015-01-08 | 2015-01-08 |  |  |  |  |  |
| 67 | 34 | Project Handoff | manual | 1d? | 2015-01-08 | 2015-01-08 |  |  |  |  |  |
| 68 | 35 | Server Implemenation Suggestions | manual | 1d? | 2015-01-08 | 2015-01-08 |  |  |  |  |  |
